How a schedule from MS Project changed from version to version. A marks actual dates.

## Version 1 (data date 2024-05-13, saved 2024-05-13)

Note of the change: project

| ID | WBS | Task | Duration | Start | Finish |
| --- | --- | --- | --- | --- | --- |
| 1 | 1 | **Этап 0. Подготовка проекта** | 30d | 2024-05-13 | 2024-06-21 |
| 2 |  | Анализ предметной области | 1d? | 2024-05-13 | 2024-05-13 |
| 3 |  | Анализ предметной области | 1d | 2024-05-13 | 2024-05-13 |
| 4 | 2 | **Этап 1. Сбор требований** | 15d | 2024-05-13 | 2024-05-31 |
| 5 |  | <Новая задача> | 1d | 2024-05-13 | 2024-05-13 |
| 6 | 3 | **Этап 2. Архитектура и дизайн** | 45d | 2024-05-13 | 2024-07-12 |
| 7 |  | <Новая задача> | 1d | 2024-05-13 | 2024-05-13 |
| 8 | 4 | **Этап 3. Разработка** | 90d? | 2024-05-13 | 2024-09-13 |
| 9 |  | цуац | 1d? | 2024-05-13 | 2024-05-13 |
| 10 | 5 | **Этап 4. Тестирование** | 20d | 2024-05-13 | 2024-06-07 |
| 11 |  | <Новая задача> | 1d | 2024-05-13 | 2024-05-13 |
| 12 | 6 | **Этап 5. Внедрение** | 15d | 2024-05-13 | 2024-05-31 |
| 13 |  | <Новая задача> | 1d | 2024-05-13 | 2024-05-13 |
| 14 | 7 | **Этап 6. Поддержка** | 90d | 2024-05-31 | 2024-10-03 |
| 15 |  | <Новая задача> | 1d | 2024-05-31 | 2024-05-31 |

## Version 2 (data date 2024-05-13, saved 2024-06-15)

Note of the change: исправления в тз и залитие ms project

Last finish 2024-10-03 → 2025-02-07 (+127d). Complete tasks 0 → 13.

Added:

| ID | Task | Duration | Start | Finish | Predecessors | Constraint | Resources |
| --- | --- | --- | --- | --- | --- | --- | --- |
| 3 | Определение целей и задач проекта, разработка ТЗ | 5d | 2024-01-29 A | 2024-02-02 A | 2 |  | Бумага [3 пачка]; клавиатура [1 штука]; Компьютер [1 штуки]; Компьютерная мышь [1 штука]; Принтер [1 штука]; Проектировщик; Руководитель проекта; Связь и инфраструктура [0.1%]; Специалист по обеспечению |
| 4 | Разработка концепции программного продукта | 5d | 2024-02-05 A | 2024-02-09 A | 3 |  | Бумага [4 пачка]; клавиатура [1 штука]; Компьютер [1 штуки]; Принтер [1 штука]; Проектировщик; Руководитель проекта; Связь и инфраструктура [0.1%] |
| 5 | Утверждение ТЗ | 3d | 2024-02-12 A | 2024-02-14 A | 4 |  | Бумага [5 пачка]; клавиатура [1 штука]; Компьютер [1 штуки]; Непредвиденные расходы [0.1%]; Принтер [1 штука]; Проектировщик; Связь и инфраструктура [0.1%] |
| 7 | Анализ требований и потребностей пользователей | 5d | 2024-02-15 A | 2024-02-21 A |  |  | Аналитик; Бумага [1 пачка]; клавиатура [1 штука]; Компьютер [1 штуки]; Компьютерная мышь [1 штука]; Принтер [1 штука]; Связь и инфраструктура [0.1%]; Специалист по обеспечению |
| 8 | Исследование конкурентов и анализ рынка | 5d | 2024-02-22 A | 2024-02-28 A | 7 |  | Аналитик; Бумага [1 пачка]; клавиатура [1 штука]; Компьютер [1 штуки]; Компьютерная мышь [1 штука]; Принтер [1 штука]; Связь и инфраструктура [0.1%]; Непредвиденные расходы [0.1%] |
| 11 | Создание диаграммы классов приложения | 5d | 2024-03-11 A | 2024-03-15 A | 10 |  | клавиатура [1 штука]; Компьютер [1 штуки]; Компьютерная мышь [1 штука]; Разработчик 1; Разработчик 2; Связь и инфраструктура [0.1%] |
| 12 | Создание схем работы классов приложения | 9d | 2024-03-18 A | 2024-03-28 A | 11 |  | клавиатура [1 штука]; Компьютер [1 штуки]; Компьютерная мышь [1 штука]; Разработчик 1; Разработчик 2; Связь и инфраструктура [0.1%] |
| 13 | Разработка структуры базы данных программы | 10d | 2024-03-29 A | 2024-04-11 A | 12 |  | клавиатура [1 штука]; Компьютер [1 штуки]; Компьютерная мышь [1 штука]; Непредвиденные расходы [0.1%]; Разработчик 1; Разработчик 2; Связь и инфраструктура [0.1%]; Хранилище данных [1 штука] |
| 16 | Разработка модулей | 20d | 2024-05-10 A | 2024-06-06 A | 15 |  | клавиатура [1 штука]; Компьютер [1 штуки]; Компьютерная мышь [1 штука]; Разработчик 1; Разработчик 2; Сервер [1 штука]; Связь и инфраструктура [0.1%] |
| 17 | Создание базы данных прложения | 14d | 2024-06-07 A | 2024-06-26 A | 16 | start no earlier than 2024-04-04 | клавиатура [1 штука]; Компьютер [1 штуки]; Компьютерная мышь [1 штука]; Разработчик 2; Связь и инфраструктура [0.1%]; Системный администратор; Хранилище данных [1 штука] |
| 18 | Создание документации ИС | 20d | 2024-06-27 | 2024-07-24 | 17 |  | Бумага [10 пачка]; клавиатура [1 штука]; Компьютер [1 штуки]; Компьютерная мышь [1 штука]; Непредвиденные расходы [0.1%]; Принтер [3 штука]; Проектировщик; Разработчик 1; Разработчик 2; Руководитель проекта; Системный администратор |
| 21 | Тестирование и исправление ошибок | 20d | 2024-08-19 | 2024-09-13 | 20 |  | клавиатура [1 штука]; Компьютер [1 штуки]; Компьютерная мышь [1 штука]; Непредвиденные расходы [0.1%]; Разработчик 1; Разработчик 2; Связь и инфраструктура [0.1%]; Сервер [1 штука]; Системный администратор; Хранилище данных [1 штука] |
| 24 | Обучение пользователей и технической поддержки | 15d | 2024-09-16 | 2024-10-04 | 18 |  | клавиатура [1 штука]; Компьютер [1 штуки]; Компьютерная мышь [1 штука]; Связь и инфраструктура [0.1%]; Сервер [1 штука]; Сетевое оборудование [1 штука]; Хранилище данных [2 штука]; Системный администратор |

Removed: 3 Анализ предметной области; 5 <Новая задача>

Changed:

| ID | Task | Start | Finish | Duration | Complete | Total float | Predecessors | Other |
| --- | --- | --- | --- | --- | --- | --- | --- | --- |
| 1 | **Этап 0. Подготовка проекта** | 2024-05-13 → 2024-01-15 A (-119d) | 2024-06-21 → 2024-02-14 A (-128d) | 30d → 23d | 0% → 100% |  |  |  |
| 2 | Анализ предметной области | 2024-05-13 → 2024-01-15 A (-119d) | 2024-05-13 → 2024-01-26 A (-108d) | 1d? → 10d | 0% → 100% |  |  | constraint none → start no earlier than 2024-01-15; resources none → Аналитик; Бумага [5 пачка]; клавиатура [1 штука]; Компьютер [1 штуки]; Компьютерная мышь [1 штука]; Принтер [1 штука]; Проектировщик; Руководитель проекта; Связь и инфраструктура [0.1%]; Специалист по обеспечению |
| 6 | **Этап 1. Сбор требований** | 2024-05-13 → 2024-02-15 A (-88d) | 2024-05-31 → 2024-02-28 A (-93d) | 15d → 10d | 0% → 100% |  | none → 1 |  |
| 9 | **Этап 2. Архитектура и дизайн** | 2024-05-13 → 2024-02-29 A (-74d) | 2024-07-12 → 2024-04-11 A (-92d) | 45d → 31d | 0% → 100% |  | none → 6 |  |
| 10 | Проектирование модулей | 2024-05-13 → 2024-02-29 A (-74d) | 2024-05-13 → 2024-03-08 A (-66d) | 1d → 7d | 0% → 100% |  |  | was named <Новая задача>; resources none → клавиатура [1 штука]; Компьютер [1 штуки]; Компьютерная мышь [1 штука]; Разработчик 1; Разработчик 2; Руководитель проекта; Связь и инфраструктура [0.1%] |
| 14 | **Этап 3. Разработка** | 2024-05-13 → 2024-04-12 A (-31d) | 2024-09-13 → 2024-07-24 (-51d) | 90d? → 74d | 0% → 73% | none → 0d | none → 9 |  |
| 15 | Разработка интерфейса | 2024-05-13 → 2024-04-12 A (-31d) | 2024-05-13 → 2024-05-09 A (-4d) | 1d? → 20d | 0% → 100% |  |  | was named цуац; resources none → клавиатура [1 штука]; Компьютер [1 штуки]; Компьютерная мышь [1 штука]; Разработчик 1; Сервер [1 штука]; Хранилище данных [1 штука]; Связь и инфраструктура [0.1%] |
| 19 | **Этап 4. Тестирование** | 2024-05-13 → 2024-07-25 (+73d) | 2024-06-07 → 2024-09-13 (+98d) | 20d → 37d |  | none → 0d | none → 14 |  |
| 20 | Отладка программы | 2024-05-13 → 2024-07-25 (+73d) | 2024-05-13 → 2024-08-16 (+95d) | 1d → 17d |  | none → 0d |  | was named <Новая задача>; resources none → клавиатура [1 штука]; Компьютер [1 штуки]; Компьютерная мышь [1 штука]; Разработчик 1; Разработчик 2; Связь и инфраструктура [0.1%]; Сервер [1 штука]; Системный администратор; Хранилище данных [1 штука] |
| 22 | **Этап 5. Внедрение** | 2024-05-13 → 2024-09-16 (+126d) | 2024-05-31 → 2024-10-04 (+126d) |  |  | none → 0d | none → 19 |  |
| 23 | Создание плана внедрения, определение ключевых этапов | 2024-05-13 → 2024-09-16 (+126d) | 2024-05-13 → 2024-10-04 (+144d) | 1d → 15d |  | none → 0d |  | was named <Новая задача>; resources none → Бумага [2 пачка]; клавиатура [1 штука]; Компьютер [1 штуки]; Компьютерная мышь [1 штука]; Менеджер по внедрению; Непредвиденные расходы [0.1%]; Принтер [1 штука]; Руководитель проекта; Связь и инфраструктура [0.1%]; Сервер [1 штука]; Сетевое оборудование [1 штука]; Специалист по обеспечению |
| 25 | **Этап 6. Поддержка** | 2024-05-31 → 2024-10-07 (+129d) | 2024-10-03 → 2025-02-07 (+127d) |  |  | none → 0d | none → 22 |  |
| 26 | Осуществление поддержи ИС | 2024-05-31 → 2024-10-07 (+129d) | 2024-05-31 → 2025-02-07 (+252d) | 1d → 90d |  | none → 0d |  | was named <Новая задача>; resources none → Системный администратор; клавиатура [1 штука]; Компьютер [1 штуки]; Компьютерная мышь [1 штука]; Непредвиденные расходы [0.1%]; Руководитель проекта; Связь и инфраструктура [0.1%]; Сервер [1 штука]; Сетевое оборудование [1 штука]; Специалист по обеспечению; Хранилище данных [1 штука] |
